# ForumView-Nov-Dec2006-Jan2016

Schedule from MS Project, 2006-11-27 to 2016-02-11, costs in р., A marks actual dates.
Scad Soft

## Calendars

- Standard: Mon-Fri 08:00-12:00, 13:00-17:00; Sat-Sun off. Exceptions (off unless hours are given): 2006-11-27 08:00-12:00, 13:00-17:00, 2006-12-04 to 2006-12-05 10:00-18:00, 2006-12-06 09:00-16:00, 2006-12-11 12:00-16:00, 17:00-20:00, 21:00-24:00, 2006-12-12 00:00-03:00, 09:00-16:00, 2006-12-13 10:00-18:00, 2006-12-18 08:00-19:00, 2016-01-09 to 2016-01-10 08:00-12:00, 13:00-17:00.

## Resources

| Resource | Rate |
| --- | --- |
| Цветков | 200 |
| КВС |  |
| 16 |  |

## Schedule

| ID | WBS | Task | Type | Duration | Start | Finish | Predecessors | Complete | Baseline start | Baseline finish | Baseline duration | Constraint | Resources | Work | Actual work | Cost | Actual cost |
| --- | --- | --- | --- | --- | --- | --- | --- | --- | --- | --- | --- | --- | --- | --- | --- | --- | --- |
| 2 | 1 | **Завершение 1-го договора** |  | 18.75d | 2006-11-27 A | 2006-12-21 A |  | 100% | 2006-11-27 | 2006-12-14 | 12d? | start no earlier than 2006-11-27 |  | 105.45h | 105.45h | 21,089.39 | 21,089.39 |
| 3 | 1.1 | Убрать отменку элемента после опции "Элементы в плоскости выбора |  | 2h | 2006-11-27 A | 2006-11-27 A |  | 100% | 2004-05-28 | 2004-05-28 | 2h | must start on 2006-11-27 | Цветков | 2h | 2h | 400 | 400 |
| 4 | 1.2 | **Исправление ошибок** |  | 2d | 2006-11-27 A | 2006-11-29 A |  | 100% | 2006-11-27 | 2006-11-28 | 2d? |  |  | 16h | 16h | 3,200 | 3,200 |
| 5 | 1.2.1 | Баг с треугольниками |  | 8h | 2006-11-27 A | 2006-11-28 A | 3 | 100% | 2006-11-27 | 2006-11-28 | 2d? | start no earlier than 2006-11-27 | Цветков | 8h | 8h | 1,600 | 1,600 |
| 6 | 1.2.2 | Зависание на фрагменте схемы |  | 2h | 2006-11-28 A | 2006-11-28 A | 5 | 100% | 2006-11-28 | 2006-11-28 | 1d? |  | Цветков | 2h | 2h | 400 | 400 |
| 7 | 1.2.3 | Треугольники, четырёхугольники с числом узлов более 3-х/4-х |  | 2h | 2006-11-28 A | 2006-11-28 A | 6 | 100% | 2006-11-27 | 2006-11-27 | 1d |  | Цветков | 2h | 2h | 400 | 400 |
| 8 | 1.2.4 | Неправильно работает отсечение окном |  | 4h | 2006-11-29 A | 2006-11-29 A | 7 | 100% |  |  |  |  | Цветков | 4h | 4h | 800 | 800 |
| 9 | 1.3 | **Новый фунционал** |  | 11.88d | 2006-12-01 A | 2006-12-18 A |  | 100% | 2006-11-29 | 2006-12-13 | 9d |  |  | 63.45h | 63.45h | 12,689.39 | 12,689.39 |
| 10 | 1.3.1 | Более корректная прорисовка шрифтов в значениях |  | 12h | 2006-12-05 A | 2006-12-07 A | 16 | 100% |  |  |  | start no earlier than 2006-12-05 | Цветков | 13h | 13h | 2,600 | 2,600 |
| 11 | 1.3.2 | Коэффициент в настройки для шкалы деформации |  | 4h | 2006-12-11 A | 2006-12-11 A | 29 | 100% | 2006-11-29 | 2006-11-29 | 1d | start no earlier than 2006-11-30 | Цветков | 4h | 4h | 800 | 800 |
| 12 | 1.3.3 | Настройки шрифтов |  | 1d | 2006-12-11 A | 2006-12-12 A | 11 | 100% | 2006-11-30 | 2006-12-01 | 2d |  | Цветков | 5.33h | 5.33h | 1,066.67 | 1,066.67 |
| 13 | 1.3.4 | Обычные кнопки вместо чекбоксов |  | 4h | 2006-12-12 A | 2006-12-12 A | 12 | 100% |  |  |  |  | Цветков | 4h | 4h | 800 | 800 |
| 14 | 1.3.5 | **Отображение усилий** |  | 11.88d | 2006-12-01 A | 2006-12-18 A |  | 100% | 2006-12-05 | 2006-12-06 | 2d |  |  | 37.11h | 37.11h | 7,422.73 | 7,422.73 |
| 15 | 1.3.5.1 | Получение результатов |  | 1d | 2006-12-01 A | 2006-12-04 A | 28 | 100% | 2006-12-05 | 2006-12-05 | 1d |  | Цветков | 10h | 10h | 2,000 | 2,000 |
| 16 | 1.3.5.2 | Отрисовка сетки |  | 1d | 2006-12-04 A | 2006-12-05 A | 15 | 100% | 2006-12-06 | 2006-12-06 | 1d | start no earlier than 2006-12-04 | Цветков | 8h | 8h | 1,600 | 1,600 |
| 17 | 1.3.5.3 | **Отрисовка сетки, значения в центре** |  | 8.38d | 2006-12-07 A | 2006-12-18 A | 10 | 100% |  |  |  |  |  | 12.36h | 12.36h | 2,472.73 | 2,472.73 |
| 18 | 1.3.5.3.1 | Оцифровка фактора внутри эл-та |  | 4h | 2006-12-07 A | 2006-12-07 A |  | 100% |  |  |  |  | Цветков | 4h | 4h | 800 | 800 |
| 19 | 1.3.5.3.2 | Разбиение элемента по значениям фактора внутри |  | 4h | 2006-12-12 A | 2006-12-13 A | 13 | 100% |  |  |  |  | Цветков | 4h | 4h | 800 | 800 |
| 20 | 1.3.5.3.3 | Учет промежуточных узлоа для треугольников, четырёхугольников с числом узлов более 3-х/4-х |  | 6h | 2006-12-18 A | 2006-12-18 A | 19 | 100% |  |  |  | start no earlier than 2006-12-18 | Цветков | 4.36h | 4.36h | 872.73 | 872.73 |
| 21 | 1.3.5.4 | Клеёнка |  | 6h | 2006-12-07 A | 2006-12-08 A | 18 | 100% |  |  |  |  | Цветков | 6.75h | 6.75h | 1,350 | 1,350 |
| 22 | 1.4 | Промежуточное тестирование |  | 1d | 2006-12-13 A | 2006-12-14 A | 19 | 100% |  |  |  |  | Цветков | 8h | 8h | 1,600 | 1,600 |
| 23 | 1.5 | Приезд КВС, показ рез-тов | milestone | 4h | 2006-12-14 A | 2006-12-14 A | 22 | 100% |  |  |  | start no earlier than 2006-12-14 | Цветков | 4h | 4h | 800 | 800 |
| 24 | 1.6 | Исправление ошибок (от Куликова) |  | 4h | 2006-12-18 A | 2006-12-19 A | 20 | 100% |  |  |  |  | Цветков | 4h | 4h | 800 | 800 |
| 25 | 1.7 | Исправление ошибок 2 |  | 1d | 2006-12-20 A | 2006-12-21 A | 24 | 100% |  |  |  | start no earlier than 2006-12-20 | Цветков | 8h | 8h | 1,600 | 1,600 |

| ID | WBS | Task | Duration | Start | Finish | Predecessors | Complete | Remaining | Baseline start | Baseline finish | Baseline duration | Total slack | Free slack | Constraint | Resources | Work | Actual work | Cost | Actual cost |
| --- | --- | --- | --- | --- | --- | --- | --- | --- | --- | --- | --- | --- | --- | --- | --- | --- | --- | --- | --- |
| 26 | 2 | **Отображение результатов внутри вьювер-а** | 19.5d | 2006-11-29 A | 2006-12-26 |  | 45% | 10.64d | 2006-12-07 | 2006-12-12 | 3d | 2379.75d |  |  |  | 44h | 20h | 8,800 | 4,000 |
| 27 | 2.1 | Кнопка и отображение результатов | 1d | 2006-11-29 A | 2006-11-30 A | 4 | 100% |  |  |  |  |  |  |  | Цветков | 8h | 8h | 1,600 | 1,600 |
| 28 | 2.2 | View для результатов расчета | 1d | 2006-11-30 A | 2006-12-01 A | 27 | 100% |  | 2006-12-07 | 2006-12-07 | 1d |  |  |  | Цветков | 8h | 8h | 1,600 | 1,600 |
| 29 | 2.3 | Frame для результатов расчета | 4h | 2006-12-08 A | 2006-12-11 A | 21 | 100% |  |  |  |  |  |  |  | Цветков | 4h | 4h | 800 | 800 |
| 30 | 2.4 | Новый тулбар | 1d | 2006-12-21 | 2006-12-22 | 23, 2 |  |  | 2006-12-08 | 2006-12-08 | 1d | 2374.75d | 0d |  | Цветков | 8h |  | 1,600 |  |
| 31 | 2.5 | Многооконный режим | 1d | 2006-12-22 | 2006-12-25 | 30 |  |  | 2006-12-12 | 2006-12-12 | 1d | 2374.75d | 0d |  | Цветков | 8h |  | 1,600 |  |
| 32 | 2.6 | Завершение реализации | 1d | 2006-12-25 | 2006-12-26 | 31 |  |  |  |  |  | 2374.75d | 0d |  | Цветков | 8h |  | 1,600 |  |
| 33 | 3 | Тестирование поставки | 4.25d | 2006-12-26 | 2007-01-01 | 32 |  |  | 2006-12-13 | 2006-12-13 | 1d | 2374.75d |  |  | Цветков | 34h |  | 6,800 |  |
| 34 | 4 | **Дополнительные задачи по вьюверу** | 26d | 2016-01-08 A | 2016-02-11 |  | 26% | 19.25d |  |  |  | 0d |  |  |  | 104h | 27h | 20,800 | 5,400 |
| 35 | 4.1 | Шкала факторов в виде плавающего окна | 8d | 2016-01-08 A | 2016-01-18 |  | 84% | 1.25d |  |  |  | 0d |  | start no earlier than 2016-01-08 | Цветков [50%] | 32h | 27h | 6,400 | 5,400 |
| 36 | 4.2 | Исследование получения данных из Скад 21 | 4d | 2016-01-18 | 2016-01-22 | 35 |  |  |  |  |  | 0d |  | start no earlier than 2016-01-07 | Цветков [50%] | 16h |  | 3,200 |  |
| 37 | 4.3 | **Отображение нагрузок на расчетной схеме** | 10d | 2016-01-22 | 2016-02-05 | 36 |  |  |  |  |  | 0d |  |  |  | 40h |  | 8,000 |  |
| 38 | 4.3.1 | Распределенные нагрузки | 4d | 2016-01-22 | 2016-01-28 |  |  |  |  |  |  | 0d |  |  | Цветков [50%] | 16h |  | 3,200 |  |
| 39 | 4.3.2 | Узловые нагрузки | 2d | 2016-01-28 | 2016-02-01 | 38 |  |  |  |  |  | 0d |  |  | Цветков [50%] | 8h |  | 1,600 |  |
| 40 | 4.3.3 | Другие нагрузки | 4d | 2016-02-01 | 2016-02-05 | 39 |  |  |  |  |  | 0d |  |  | Цветков [50%] | 16h |  | 3,200 |  |
| 41 | 4.4 | **Многооконный режим** | 4d | 2016-02-05 | 2016-02-11 | 40 |  |  |  |  |  | 0d |  |  |  | 16h |  | 3,200 |  |
| 42 | 4.4.1 | Многооконный режим | 4d | 2016-02-05 | 2016-02-11 |  |  |  |  |  |  | 0d |  |  | Цветков [50%] | 16h |  | 3,200 |  |
