# ForumView-Nov-Dec2006

Schedule from MS Project, 2006-11-27 to 2006-12-27, costs in р., A marks actual dates.
Scad Soft

## Calendars

- Standard: Mon-Fri 08:00-12:00, 13:00-17:00; Sat-Sun off. Exceptions (off unless hours are given): 2006-11-27 08:00-12:00, 13:00-17:00, 2006-12-04 to 2006-12-05 10:00-18:00, 2006-12-06 09:00-16:00, 2006-12-11 12:00-16:00, 17:00-20:00, 21:00-24:00, 2006-12-12 00:00-03:00, 09:00-16:00, 2006-12-13 10:00-18:00, 2006-12-18 08:00-19:00.

## Resources

| Resource |
| --- |
| Цветков |
| КВС |
| 16 |

## Schedule

| ID | WBS | Task | Type | Duration | Start | Finish | Predecessors | Complete | Baseline start | Baseline finish | Baseline duration | Constraint | Resources | Work | Actual work | Cost | Actual cost |
| --- | --- | --- | --- | --- | --- | --- | --- | --- | --- | --- | --- | --- | --- | --- | --- | --- | --- |
| 2 | 1 | **Завершение 1-го договора** |  | 18.75d | 2006-11-27 10:00 A | 2006-12-21 10:00 A |  | 100% | 2006-11-27 08:00 | 2006-12-14 17:00 | 12d? | start no earlier than 2006-11-27 10:00 |  | 271.45h | 117.45h | 21,089.39 | 21,089.39 |
| 3 | 1.1 | Убрать отменку элемента после опции "Элементы в плоскости выбора |  | 2h | 2006-11-27 10:00 A | 2006-11-27 12:00 A |  | 100% | 2004-05-28 08:00 | 2004-05-28 10:00 | 2h | must start on 2006-11-27 10:00 | Цветков | 2h | 2h | 400 | 400 |
| 4 | 1.2 | **Исправление ошибок** |  | 2d | 2006-11-27 13:00 A | 2006-11-29 12:00 A |  | 100% | 2006-11-27 08:00 | 2006-11-28 17:00 | 2d? |  |  | 16h | 16h | 3,200 | 3,200 |
| 5 | 1.2.1 | Баг с треугольниками |  | 8h | 2006-11-27 13:00 A | 2006-11-28 12:00 A | 3 | 100% | 2006-11-27 08:00 | 2006-11-28 17:00 | 2d? | start no earlier than 2006-11-27 10:00 | Цветков | 8h | 8h | 1,600 | 1,600 |
| 6 | 1.2.2 | Зависание на фрагменте схемы |  | 2h | 2006-11-28 13:00 A | 2006-11-28 15:00 A | 5 | 100% | 2006-11-28 08:00 | 2006-11-28 17:00 | 1d? |  | Цветков | 2h | 2h | 400 | 400 |
| 7 | 1.2.3 | Треугольники, четырёхугольники с числом узлов более 3-х/4-х |  | 2h | 2006-11-28 15:00 A | 2006-11-28 17:00 A | 6 | 100% | 2006-11-27 08:00 | 2006-11-27 17:00 | 1d |  | Цветков | 2h | 2h | 400 | 400 |
| 8 | 1.2.4 | Неправильно работает отсечение окном |  | 4h | 2006-11-29 08:00 A | 2006-11-29 12:00 A | 7 | 100% |  |  |  |  | Цветков | 4h | 4h | 800 | 800 |
| 9 | 1.3 | **Новый фунционал** |  | 11.88d | 2006-12-01 13:00 A | 2006-12-18 16:00 A |  | 100% | 2006-11-29 08:00 | 2006-12-13 17:00 | 9d |  |  | 229.45h | 75.45h | 12,689.39 | 12,689.39 |
| 10 | 1.3.1 | Более корректная прорисовка шрифтов в значениях |  | 12h | 2006-12-05 14:00 A | 2006-12-07 09:00 A | 16 | 100% |  |  |  | start no earlier than 2006-12-05 05:00 | Цветков | 13h | 13h | 2,600 | 2,600 |
| 11 | 1.3.2 | Коэффициент в настройки для шкалы деформации |  | 4h | 2006-12-11 15:00 A | 2006-12-11 20:00 A | 29, 21 | 100% | 2006-11-29 08:00 | 2006-11-29 17:00 | 1d | start no earlier than 2006-11-30 06:00 | Цветков | 4h | 4h | 800 | 800 |
| 12 | 1.3.3 | Настройки шрифтов |  | 1d | 2006-12-11 21:00 A | 2006-12-12 11:00 A | 11 | 100% | 2006-11-30 08:00 | 2006-12-01 17:00 | 2d |  | Цветков | 5.33h | 5.33h | 1,066.67 | 1,066.67 |
| 13 | 1.3.4 | Обычные кнопки вместо чекбоксов |  | 4h | 2006-12-12 11:00 A | 2006-12-12 15:00 A | 12 | 100% |  |  |  |  | Цветков | 4h | 4h | 800 | 800 |
| 14 | 1.3.5 | **Отображение усилий** |  | 11.88d | 2006-12-01 13:00 A | 2006-12-18 16:00 A |  | 100% | 2006-12-05 08:00 | 2006-12-06 17:00 | 2d |  |  | 203.11h | 49.11h | 7,422.73 | 7,422.73 |
| 15 | 1.3.5.1 | Получение результатов |  | 1d | 2006-12-01 13:00 A | 2006-12-04 14:00 A | 28 | 100% | 2006-12-05 08:00 | 2006-12-05 17:00 | 1d |  | Цветков | 10h | 10h | 2,000 | 2,000 |
| 16 | 1.3.5.2 | Отрисовка сетки |  | 1d | 2006-12-04 14:00 A | 2006-12-05 14:00 A | 15 | 100% | 2006-12-06 08:00 | 2006-12-06 17:00 | 1d | start no earlier than 2006-12-04 12:00 | Цветков | 8h | 8h | 1,600 | 1,600 |
| 17 | 1.3.5.3 | **Отрисовка сетки, значения в центре** |  | 8.38d | 2006-12-07 09:00 A | 2006-12-18 16:00 A | 10 | 100% |  |  |  |  |  | 81.36h | 16.36h | 2,472.73 | 2,472.73 |
| 18 | 1.3.5.3.1 | Оцифровка фактора внутри эл-та |  | 4h | 2006-12-07 09:00 A | 2006-12-07 14:00 A |  | 100% |  |  |  |  | Цветков | 4h | 4h | 800 | 800 |
| 19 | 1.3.5.3.2 | Разбиение элемента по значениям фактора внутри |  | 4h | 2006-12-12 15:00 A | 2006-12-13 13:00 A | 13 | 100% |  |  |  |  | Цветков | 4h | 4h | 800 | 800 |
| 20 | 1.3.5.3.3 | Учет промежуточных узлоа для треугольников, четырёхугольников с числом узлов более 3-х/4-х |  | 6h | 2006-12-18 10:00 A | 2006-12-18 16:00 A | 19 | 100% |  |  |  | start no earlier than 2006-12-18 10:00 | Цветков | 4.36h | 4.36h | 872.73 | 872.73 |
| 21 | 1.3.5.4 | Клеёнка |  | 6h | 2006-12-07 14:00 A | 2006-12-08 11:00 A | 18, 17, 16 | 100% |  |  |  |  | Цветков | 6.75h | 6.75h | 1,350 | 1,350 |
| 22 | 1.4 | Промежуточное тестирование |  | 1d | 2006-12-13 13:00 A | 2006-12-14 11:00 A | 19, 13 | 100% |  |  |  |  | Цветков | 8h | 8h | 1,600 | 1,600 |
| 23 | 1.5 | Приезд КВС, показ рез-тов | milestone | 4h | 2006-12-14 13:00 A | 2006-12-14 17:00 A | 22 | 100% |  |  |  | start no earlier than 2006-12-14 13:00 | Цветков | 4h | 4h | 800 | 800 |
| 24 | 1.6 | Исправление ошибок (от Куликова) |  | 4h | 2006-12-18 16:00 A | 2006-12-19 09:00 A | 20 | 100% |  |  |  |  | Цветков | 4h | 4h | 800 | 800 |
| 25 | 1.7 | Исправление ошибок 2 |  | 1d | 2006-12-20 10:00 A | 2006-12-21 10:00 A | 24 | 100% |  |  |  | start no earlier than 2006-12-20 10:00 | Цветков | 8h | 8h | 1,600 | 1,600 |

| ID | WBS | Task | Type | Duration | Start | Finish | Predecessors | Complete | Remaining | Baseline start | Baseline finish | Baseline duration | Total slack | Resources | Work | Actual work | Cost | Actual cost |
| --- | --- | --- | --- | --- | --- | --- | --- | --- | --- | --- | --- | --- | --- | --- | --- | --- | --- | --- |
| 26 | 2 | **Отображение результатов внутри вьювер-а** |  | 19.5d | 2006-11-29 13:00 A | 2006-12-26 10:00 |  | 45% | 10.64d | 2006-12-07 08:00 | 2006-12-12 17:00 | 3d | 0d |  | 181h | 28h | 8,800 | 4,000 |
| 27 | 2.1 | Кнопка и отображение результатов |  | 1d | 2006-11-29 13:00 A | 2006-11-30 12:00 A | 4 | 100% |  |  |  |  |  | Цветков | 8h | 8h | 1,600 | 1,600 |
| 28 | 2.2 | View для результатов расчета |  | 1d | 2006-11-30 13:00 A | 2006-12-01 12:00 A | 27 | 100% |  | 2006-12-07 08:00 | 2006-12-07 17:00 | 1d |  | Цветков | 8h | 8h | 1,600 | 1,600 |
| 29 | 2.3 | Frame для результатов расчета |  | 4h | 2006-12-08 16:00 A | 2006-12-11 15:00 A | 21 | 100% |  |  |  |  |  | Цветков | 4h | 4h | 800 | 800 |
| 30 | 2.4 | Новый тулбар |  | 1d | 2006-12-21 10:00 | 2006-12-22 10:00 | 23, 2 |  |  | 2006-12-08 08:00 | 2006-12-08 17:00 | 1d | 0d | Цветков | 8h |  | 1,600 |  |
| 31 | 2.5 | Многооконный режим |  | 1d | 2006-12-22 10:00 | 2006-12-25 10:00 | 30 |  |  | 2006-12-12 08:00 | 2006-12-12 17:00 | 1d | 0d | Цветков | 8h |  | 1,600 |  |
| 32 | 2.6 | Завершение реализации |  | 1d | 2006-12-25 10:00 | 2006-12-26 10:00 | 31 |  |  |  |  |  | 0d | Цветков | 8h |  | 1,600 |  |
| 33 | 3 | Тестирование поставки | milestone | 1d | 2006-12-26 10:00 | 2006-12-27 10:00 | 32 |  |  | 2006-12-13 08:00 | 2006-12-13 17:00 | 1d | 0d | Цветков | 8h |  | 1,600 |  |
