# ForumView

Schedule from MS Project, 2004-03-23 to 2006-12-14, A marks actual dates.
Scad Soft

## Calendars

- Standard: Mon-Fri 08:00-12:00, 13:00-17:00; Sat-Sun off. Exceptions (off unless hours are given): 2004-03-26 08:00-12:00, 13:00-17:00, 2004-03-29, 2004-04-05, 2004-04-12, 2004-04-19, 2004-04-26, 2004-05-03, 2004-05-10, 2004-05-17, 2004-05-24, 2004-05-31, 2004-06-07, 2004-06-14, 2004-06-21, 2004-06-28, 2004-07-05, 2004-07-12, 2004-07-19, 2004-07-26, 2004-08-02, 2004-08-09, 2004-08-16, 2004-08-23, 2004-08-30, 2004-09-06, 2004-09-13, 2004-09-20, 2004-09-27, 2004-10-04, 2004-10-11, 2004-10-18, 2004-10-25, 2004-11-01, 2004-11-08, 2004-11-15, 2004-11-22, 2004-11-29, 2004-12-06, 2004-12-13, 2004-12-20, 2004-12-27, 2005-01-03, 2005-01-10, 2005-01-17, 2005-01-24, 2005-01-31, 2005-02-07, 2005-02-14, 2005-02-21, 2005-02-28, 2005-03-07, 2005-03-14, 2005-03-21, 2005-03-28, 2005-04-04, 2005-04-11, 2005-04-18, 2005-04-25, 2005-05-02, 2005-05-09, 2005-05-16, 2005-05-23, 2005-05-30, 2005-06-06, 2005-06-13, 2005-06-20, 2005-06-27, 2005-07-04, 2005-07-11, 2005-07-18, 2005-07-25, 2005-08-01, 2005-08-08, 2005-08-15, 2005-08-22, 2005-08-29, 2005-09-05, 2005-09-12, 2005-09-19, 2005-09-26, 2005-10-03, 2005-10-10, 2005-10-17, 2005-10-24, 2005-10-31, 2005-11-07, 2005-11-14, 2005-11-21, 2005-11-28, 2005-12-05, 2005-12-12, 2005-12-19, 2005-12-26, 2006-01-02, 2006-01-09, 2006-01-16, 2006-01-23, 2006-01-30, 2006-02-06, 2006-02-13, 2006-02-20, 2006-02-27, 2006-03-06, 2006-03-13, 2006-03-20, 2006-03-27, 2006-04-03, 2006-04-10, 2006-04-17, 2006-04-24, 2006-05-01, 2006-05-08, 2006-05-15, 2006-05-22, 2006-05-29, 2006-06-05, 2006-06-12, 2006-06-19, 2006-06-26, 2006-07-03, 2006-07-10, 2006-07-17, 2006-07-24, 2006-07-31, 2006-08-07, 2006-08-14, 2006-08-21, 2006-08-28, 2006-09-04, 2006-09-11, 2006-09-18, 2006-09-25, 2006-10-02, 2006-10-09, 2006-10-16, 2006-10-23, 2006-10-30, 2006-11-06, 2006-11-13, 2006-11-20, 2006-11-27 08:00-12:00, 13:00-17:00.

## Resources

| Resource |
| --- |
| Цветков |
| КВС |

## Schedule

| ID | WBS | Task | Duration | Start | Finish | Predecessors | Complete | Remaining | Baseline start | Baseline finish | Baseline duration | Total slack | Constraint | Resources | Work | Actual work |
| --- | --- | --- | --- | --- | --- | --- | --- | --- | --- | --- | --- | --- | --- | --- | --- | --- |
| 1 | 1 | Составление календарного плана | 1d | 2004-03-23 A | 2004-03-23 A |  | 100% |  | 2004-03-23 | 2004-03-23 | 1d |  |  |  |  |  |
| 2 | 2 | **Изучение существующих реализаций** | 10d | 2004-03-24 A | 2004-04-08 | 1 | 40% | 6d | 2004-03-24 | 2004-04-08 | 10d | 0d |  |  | 8h | 8h |
| 3 | 2.1 | Scad Viewer BCB - внутренний дизайн | 1d | 2004-03-24 A | 2004-03-24 A |  | 100% |  | 2004-03-24 | 2004-03-24 | 1d |  |  |  |  |  |
| 4 | 2.2 | Приведение версиий для BCB и VC в соответствие | 1d | 2004-04-02 A | 2004-04-02 A | 18 | 100% |  | 2004-04-02 | 2004-04-02 | 1d |  |  | Цветков | 8h | 8h |
| 5 | 2.3 | KiewView - изучение исходников | 2d | 2004-04-06 | 2004-04-07 | 4 |  |  | 2004-04-06 | 2004-04-07 | 2d | 0d |  |  |  |  |
| 6 | 2.4 | Forum - пользовательский интерфейс и создание моделей | 1d | 2004-04-08 | 2004-04-08 | 5 |  |  | 2004-04-08 | 2004-04-08 | 1d | 0d |  |  |  |  |
| 7 | 3 | **Architecture** | 6d | 2004-04-09 | 2004-04-20 | 6 |  |  | 2004-04-09 | 2004-04-20 | 6d | 0d |  |  | 32h |  |
| 8 | 3.1 | Выделение компонентов | 2d | 2004-04-09 | 2004-04-13 |  |  |  | 2004-04-09 | 2004-04-13 | 2d | 0d |  | Цветков [50%] | 8h |  |
| 9 | 3.2 | Интерфейс управления рендерером | 2d | 2004-04-14 | 2004-04-15 | 8 |  |  | 2004-04-14 | 2004-04-15 | 2d | 0d |  | Цветков [50%] | 8h |  |
| 10 | 3.3 | Разработка внутреннего формата Rendering Engine | 2d | 2004-04-16 | 2004-04-20 | 9 |  |  | 2004-04-16 | 2004-04-20 | 2d | 0d |  | Цветков | 16h |  |
| 11 | 4 | **Realization** | 17d? | 2004-04-21 | 2004-05-19 | 7 |  |  | 2004-04-21 | 2004-05-19 | 17d? | 0d |  |  |  |  |
| 12 | 4.1 | User interface | 5d? | 2004-04-21 | 2004-04-28 |  |  |  | 2004-04-21 | 2004-04-28 | 5d? | 0d |  |  |  |  |
| 13 | 4.2 | **Rendering engine** | 12d | 2004-04-29 | 2004-05-19 | 12 |  |  | 2004-04-29 | 2004-05-19 | 12d | 0d |  |  |  |  |
| 14 | 4.2.1 | Триангуляция форумовских объектов | 5d | 2004-04-29 | 2004-05-06 |  |  |  | 2004-04-29 | 2004-05-06 | 5d | 0d |  |  |  |  |
| 15 | 4.2.2 | OpenGL | 2d | 2004-05-07 | 2004-05-11 | 14 |  |  | 2004-05-07 | 2004-05-11 | 2d | 0d |  |  |  |  |
| 16 | 4.2.3 | DirectX | 5d | 2004-05-12 | 2004-05-19 | 15 |  |  | 2004-05-12 | 2004-05-19 | 5d | 0d |  |  |  |  |
| 17 | 5 | Тестирование | 5d | 2004-05-20 | 2004-05-27 | 11 |  |  | 2004-05-20 | 2004-05-27 | 5d | 0d |  |  |  |  |
| 18 | 6 | **Поддержка старой реализации** | 5d | 2004-03-25 A | 2004-04-01 A |  | 100% |  | 2004-03-25 | 2004-04-01 | 5d |  |  |  | 40h | 40h |
| 19 | 6.1 | Вывод чертежей на плоттер | 2d | 2004-03-25 A | 2004-03-26 A | 3 | 100% |  | 2004-03-25 | 2004-03-26 | 2d |  |  | Цветков | 16h | 16h |
| 20 | 6.2 | Версия 1.1.0.82 (см.History.txt) | 2d | 2004-03-30 A | 2004-03-31 A | 19 | 100% |  | 2004-03-30 | 2004-03-31 | 2d |  |  | Цветков | 16h | 16h |
| 21 | 6.3 | Проблемы с выводом на HP DesignJet500 | 1d | 2004-04-01 A | 2004-04-01 A | 20 | 100% |  | 2004-04-01 | 2004-04-01 | 1d |  |  | Цветков | 8h | 8h |
| 23 | 7 | **Достижение функциональности Scad Viewer BCB** | 10d | 2004-11-02 A | 2004-11-17 |  | 71% | 2.86d | 2004-11-02 | 2004-11-17 | 10d | 436d | start no earlier than 2004-11-02 | Цветков | 132h | 101.14h |
| 24 | 7.1 | Копирование картинки в буфер обмена | 0.5d | 2004-11-02 A | 2004-11-02 A |  | 100% |  | 2004-11-02 | 2004-11-02 | 0.5d |  |  | Цветков | 4h | 4h |
| 25 | 7.2 | Информация о модели в статусбаре | 0.5d | 2004-11-02 A | 2004-11-02 A | 24 | 100% |  | 2004-11-02 | 2004-11-02 | 0.5d |  |  |  |  |  |
| 26 | 7.3 | Удаление результатов расчета | 1d | 2004-11-03 A | 2004-11-03 A | 25 | 100% |  | 2004-11-03 | 2004-11-03 | 1d |  |  | Цветков | 8h | 8h |

| ID | WBS | Task | Duration | Start | Finish | Predecessors | Complete | Remaining | Baseline start | Baseline finish | Baseline duration | Total slack | Free slack | Constraint | Resources | Work | Actual work |
| --- | --- | --- | --- | --- | --- | --- | --- | --- | --- | --- | --- | --- | --- | --- | --- | --- | --- |
| 27 | 7.4 | **Экспорт файлов** | 2d | 2004-11-10 A | 2004-11-11 A | 37 | 100% |  | 2004-11-10 | 2004-11-11 | 2d |  |  |  | Цветков | 32h | 32h |
| 28 | 7.4.1 | DXF | 1d | 2004-11-10 A | 2004-11-10 A |  | 100% |  | 2004-11-10 | 2004-11-10 | 1d |  |  |  | Цветков | 8h | 8h |
| 29 | 7.4.2 | BMP | 1d | 2004-11-11 A | 2004-11-11 A | 28 | 100% |  | 2004-11-11 | 2004-11-11 | 1d |  |  |  | Цветков | 8h | 8h |
| 30 | 7.5 | **Экспорт каталога в RTF** | 2d | 2004-11-12 A | 2004-11-16 | 29 | 50% | 1d | 2004-11-12 | 2004-11-16 | 2d | 436d | 0d |  |  |  |  |
| 31 | 7.5.1 | Property Page | 1d | 2004-11-12 | 2004-11-12 |  |  |  | 2004-11-12 | 2004-11-12 | 1d | 435d |  |  |  |  |  |
| 32 | 7.5.2 | Реализация | 1d | 2004-11-16 A | 2004-11-16 A | 31 | 100% |  | 2004-11-16 | 2004-11-16 | 1d |  |  |  |  |  |  |
| 33 | 7.6 | Пропорциональное изменение размеров панелей при ресайзинге | 1d | 2004-11-17 | 2004-11-17 | 30 |  |  | 2004-11-17 | 2004-11-17 | 1d | 436d |  |  | Цветков | 8h |  |
| 35 | 8 | **Дополнительная функциональность** | 19d? | 2004-11-04 A | 2004-12-07 |  | 57% | 8.14d? | 2004-11-04 | 2004-12-07 | 19d? | 425d |  | start no earlier than 2004-11-02 |  | 88h | 72h |
| 36 | 8.1 | **Корректная отрисовка полупрозрачной модели** | 3d | 2004-11-04 A | 2004-11-09 A | 26 | 100% |  | 2004-11-04 | 2004-11-09 | 3d |  |  |  | Цветков | 24h | 24h |
| 37 | 8.1.1 | Алгоритм без разбиения элементов | 3d | 2004-11-04 A | 2004-11-09 A |  | 100% |  | 2004-11-04 | 2004-11-09 | 3d |  |  |  |  |  |  |
| 38 | 8.2 | Разделить Main Toolbar на несколько по функц. Назначению | 1d | 2004-11-18 A | 2004-11-18 A | 33 | 100% |  | 2004-11-18 | 2004-11-18 | 1d |  |  |  | Цветков | 8h | 8h |
| 39 | 8.3 | Selection/Hiding элемента | 2d | 2004-11-19 A | 2004-11-23 A | 38 | 100% |  | 2004-11-19 | 2004-11-23 | 2d |  |  |  | Цветков | 16h | 16h |
| 40 | 8.4 | **Проблемы:** | 2d? | 2004-11-24 A | 2004-11-25 | 39 | 50% | 1d? | 2004-11-24 | 2004-11-25 | 2d? | 426d | 0d |  | Цветков | 32h | 16h |
| 41 | 8.4.1 | Неравномерное залитие цветом эл-тов в перспективе | 1d? | 2004-11-24 | 2004-11-24 |  |  |  | 2004-11-24 | 2004-11-24 | 1d? | 427d |  |  | Цветков | 8h |  |
| 42 | 8.4.2 | Неправильное отображение совпадающих пластин | 1d? | 2004-11-25 A | 2004-11-25 A | 41 | 100% |  | 2004-11-25 | 2004-11-25 | 1d? |  |  |  | Цветков | 8h | 8h |
| 43 | 8.5 | Контекстная справка | 5d | 2004-11-26 | 2004-12-03 | 40 |  |  | 2004-11-26 | 2004-12-03 | 5d | 424d |  |  |  |  |  |
| 44 | 8.6 | Поддержка других типов файлов | 1d? | 2004-12-07 A | 2004-12-07 A | 43 | 100% |  | 2004-12-07 | 2004-12-07 | 1d? |  |  |  | Цветков | 8h | 8h |
| 46 | 9 | **Планы** | 1d? | 2004-05-28 A | 2004-05-28 | 17 | 25% | 0.75d? | 2004-05-28 | 2004-05-28 | 1d? | 534d |  |  |  | 8h |  |
| 47 | 9.1 | ? Element properties | 1d? | 2004-05-28 | 2004-05-28 |  |  |  | 2004-05-28 | 2004-05-28 | 1d? | 534d |  |  | Цветков | 8h |  |
| 48 | 9.2 | Отображение результатов расчета | 1d? | 2004-05-28 | 2004-05-28 |  |  |  | 2004-05-28 | 2004-05-28 | 1d? | 532d |  |  |  |  |  |
| 49 | 9.3 | Поддержка рендерера Mpeg | 1d? | 2004-05-28 A | 2004-05-28 |  | 75% | 0.25d? | 2004-05-28 | 2004-05-28 | 1d? | 534d |  |  |  |  |  |
| 51 | 10 | **Завершение 1-го договора** | 13.75d? | 2006-11-27 A | 2006-12-14 |  | 21% | 10.91d? | 2006-11-27 | 2006-12-14 | 12d? | 0d |  | start no earlier than 2006-11-27 | Цветков | 360h | 52h |
| 52 | 10.1 | Убрать отменку элемента после опции "Элементы в плоскости выбора | 2h | 2006-11-27 A | 2006-11-27 A |  | 100% |  | 2004-05-28 | 2004-05-28 | 2h |  |  | must start on 2006-11-27 | Цветков | 2h | 2h |
| 53 | 10.2 | **Исправление ошибок** | 6d? | 2006-11-27 A | 2006-12-05 |  | 50% | 3d? | 2006-11-27 | 2006-11-28 | 2d? | 7.5d |  |  | Цветков | 112h | 48h |
| 54 | 10.2.1 | Баг с треугольниками | 8h | 2006-11-27 A | 2006-11-28 A | 52 | 100% |  | 2006-11-27 | 2006-11-28 | 2d? |  |  | start no earlier than 2006-11-27 | Цветков | 8h | 8h |
| 55 | 10.2.2 | Зависание на фрагменте схемы | 2h | 2006-11-28 A | 2006-11-28 A | 54 | 100% |  | 2006-11-28 | 2006-11-28 | 1d? |  |  |  | Цветков | 2h | 2h |
| 56 | 10.2.3 | Треугольники, четырёхугольники с числом узлов болдее 3-х/4-х | 2h | 2006-11-28 A | 2006-11-28 A | 55 | 100% |  | 2006-11-27 | 2006-11-27 | 1d |  |  |  | Цветков | 2h | 2h |
| 57 | 10.2.4 | Неправильно работает отсечение окном | 4h | 2006-11-29 A | 2006-11-29 A | 56 | 100% |  |  |  |  |  |  |  | Цветков | 4h | 4h |

Notes:
- 36: Разбиение перекрывающихся элементов и правильная сортировка по глубине

| ID | WBS | Task | Type | Duration | Start | Finish | Predecessors | Complete | Remaining | Baseline start | Baseline finish | Baseline duration | Total slack | Free slack | Constraint | Resources | Work | Actual work |
| --- | --- | --- | --- | --- | --- | --- | --- | --- | --- | --- | --- | --- | --- | --- | --- | --- | --- | --- |
| 58 | 10.2.5 | **Просмотр результатов в окне вьювера** |  | 4d? | 2006-11-29 A | 2006-12-05 | 57 | 25% | 3d? |  |  |  | 7.5d |  |  | Цветков | 48h | 8h |
| 59 | 10.2.5.1 | Кнопка и отображение результатов |  | 1d | 2006-11-29 A | 2006-11-30 A |  | 100% |  |  |  |  |  |  |  |  |  |  |
| 60 | 10.2.5.2 | Получение комментариев от Карпиловского |  | 2d | 2006-11-30 | 2006-12-04 | 59 |  |  |  |  |  | 7.5d | 0d | start no earlier than 2006-11-27 | КВС | 16h |  |
| 61 | 10.2.5.3 | Завершение реализации |  | 1d? | 2006-12-04 | 2006-12-05 | 60 |  |  |  |  |  | 7.5d |  |  |  |  |  |
| 62 | 10.3 | **Новый фунционал** |  | 9.5d | 2006-11-30 | 2006-12-13 |  |  |  | 2006-11-29 | 2006-12-13 | 9d | 1.5d |  |  | Цветков | 136h |  |
| 63 | 10.3.1 | Коэффициент в настройки для шкалы деформации |  | 1d | 2006-11-30 | 2006-11-30 |  |  |  | 2006-11-29 | 2006-11-29 | 1d | 1.5d | 0d | start no earlier than 2006-11-30 | Цветков | 8h |  |
| 64 | 10.3.2 | Настройки шрифтов |  | 2d | 2006-12-01 | 2006-12-04 | 63 |  |  | 2006-11-30 | 2006-12-01 | 2d | 1.5d | 0d |  | Цветков | 16h |  |
| 65 | 10.3.3 | Обычные кнопки вместо чекбоксов |  | 4h | 2006-12-05 | 2006-12-05 | 64 |  |  |  |  |  | 1.5d | 0d |  | Цветков | 4h |  |
| 66 | 10.3.4 | **Отображение усилий** |  | 2d | 2006-12-05 | 2006-12-07 | 65 |  |  | 2006-12-05 | 2006-12-06 | 2d | 1.5d | 0d |  | Цветков | 16h |  |
| 67 | 10.3.4.1 | Получение результатов |  | 1d | 2006-12-05 | 2006-12-06 |  |  |  | 2006-12-05 | 2006-12-05 | 1d | 1.5d | 0d |  |  |  |  |
| 68 | 10.3.4.2 | Отрисовка сетки |  | 1d | 2006-12-06 | 2006-12-07 | 67 |  |  | 2006-12-06 | 2006-12-06 | 1d | 1.5d |  |  |  |  |  |
| 69 | 10.3.5 | **Отображение результатов внутри вьювер-а** |  | 3d | 2006-12-07 | 2006-12-12 | 66 |  |  | 2006-12-07 | 2006-12-12 | 3d | 1.5d |  |  | Цветков | 24h |  |
| 70 | 10.3.5.1 | View для результатов расчета |  | 1d | 2006-12-07 | 2006-12-08 |  |  |  | 2006-12-07 | 2006-12-07 | 1d | 1.5d | 0d |  |  |  |  |
| 71 | 10.3.5.2 | Новый тулбар |  | 1d | 2006-12-08 | 2006-12-11 | 70 |  |  | 2006-12-08 | 2006-12-08 | 1d | 1.5d | 0d |  |  |  |  |
| 72 | 10.3.5.3 | Многооконный режим |  | 1d | 2006-12-11 | 2006-12-12 | 71 |  |  | 2006-12-12 | 2006-12-12 | 1d | 1.5d | 0d |  |  |  |  |
| 73 | 10.3.6 | Тестирование поставки |  | 1d | 2006-12-12 | 2006-12-13 | 72 |  |  | 2006-12-13 | 2006-12-13 | 1d | 1.5d |  |  |  |  |  |
| 74 | 10.4 | Milestone | milestone | 0d | 2006-12-14 | 2006-12-14 | 73 |  |  | 2006-12-14 | 2006-12-14 | 0d | 0d |  | must finish on 2006-12-14 |  |  |  |
