# ForumView1

Schedule from MS Project, 2004-03-23 to 2006-12-14, A marks actual dates.
Scad Soft

## Calendars

- Standard: Mon off; Tue-Fri 08:00-12:00, 13:00-17:00; Sat-Sun off. Exceptions (off unless hours are given): 2004-03-26 08:00-12:00, 13:00-17:00, 2006-11-27 08:00-12:00, 13:00-17:00.

## Resources

| Resource |
| --- |
| Цветков |

## Schedule

| ID | WBS | Task | Duration | Start | Finish | Predecessors | Complete | Remaining | Baseline start | Baseline finish | Baseline duration | Total slack | Constraint | Resources | Work | Actual work |
| --- | --- | --- | --- | --- | --- | --- | --- | --- | --- | --- | --- | --- | --- | --- | --- | --- |
| 1 | 1 | Составление календарного плана | 1d | 2004-03-23 A | 2004-03-23 A |  | 100% |  | 2004-03-23 | 2004-03-23 | 1d |  |  |  |  |  |
| 2 | 2 | **Изучение существующих реализаций** | 10d | 2004-03-24 A | 2004-04-08 | 1 | 40% | 6d | 2004-03-24 | 2004-04-08 | 10d | 0d |  |  | 8h | 8h |
| 3 | 2.1 | Scad Viewer BCB - внутренний дизайн | 1d | 2004-03-24 A | 2004-03-24 A |  | 100% |  | 2004-03-24 | 2004-03-24 | 1d |  |  |  |  |  |
| 4 | 2.2 | Приведение версиий для BCB и VC в соответствие | 1d | 2004-04-02 A | 2004-04-02 A | 18 | 100% |  | 2004-04-02 | 2004-04-02 | 1d |  |  | Цветков | 8h | 8h |
| 5 | 2.3 | KiewView - изучение исходников | 2d | 2004-04-06 | 2004-04-07 | 4 |  |  | 2004-04-06 | 2004-04-07 | 2d | 0d |  |  |  |  |
| 6 | 2.4 | Forum - пользовательский интерфейс и создание моделей | 1d | 2004-04-08 | 2004-04-08 | 5 |  |  | 2004-04-08 | 2004-04-08 | 1d | 0d |  |  |  |  |
| 7 | 3 | **Architecture** | 6d | 2004-04-09 | 2004-04-20 | 6 |  |  | 2004-04-09 | 2004-04-20 | 6d | 0d |  |  | 32h |  |
| 8 | 3.1 | Выделение компонентов | 2d | 2004-04-09 | 2004-04-13 |  |  |  | 2004-04-09 | 2004-04-13 | 2d | 0d |  | Цветков [50%] | 8h |  |
| 9 | 3.2 | Интерфейс управления рендерером | 2d | 2004-04-14 | 2004-04-15 | 8 |  |  | 2004-04-14 | 2004-04-15 | 2d | 0d |  | Цветков [50%] | 8h |  |
| 10 | 3.3 | Разработка внутреннего формата Rendering Engine | 2d | 2004-04-16 | 2004-04-20 | 9 |  |  | 2004-04-16 | 2004-04-20 | 2d | 0d |  | Цветков | 16h |  |
| 11 | 4 | **Realization** | 17d? | 2004-04-21 | 2004-05-19 | 7 |  |  | 2004-04-21 | 2004-05-19 | 17d? | 0d |  |  |  |  |
| 12 | 4.1 | User interface | 5d? | 2004-04-21 | 2004-04-28 |  |  |  | 2004-04-21 | 2004-04-28 | 5d? | 0d |  |  |  |  |
| 13 | 4.2 | **Rendering engine** | 12d | 2004-04-29 | 2004-05-19 | 12 |  |  | 2004-04-29 | 2004-05-19 | 12d | 0d |  |  |  |  |
| 14 | 4.2.1 | Триангуляция форумовских объектов | 5d | 2004-04-29 | 2004-05-06 |  |  |  | 2004-04-29 | 2004-05-06 | 5d | 0d |  |  |  |  |
| 15 | 4.2.2 | OpenGL | 2d | 2004-05-07 | 2004-05-11 | 14 |  |  | 2004-05-07 | 2004-05-11 | 2d | 0d |  |  |  |  |
| 16 | 4.2.3 | DirectX | 5d | 2004-05-12 | 2004-05-19 | 15 |  |  | 2004-05-12 | 2004-05-19 | 5d | 0d |  |  |  |  |
| 17 | 5 | Тестирование | 5d | 2004-05-20 | 2004-05-27 | 11 |  |  | 2004-05-20 | 2004-05-27 | 5d | 0d |  |  |  |  |
| 18 | 6 | **Поддержка старой реализации** | 5d | 2004-03-25 A | 2004-04-01 A |  | 100% |  | 2004-03-25 | 2004-04-01 | 5d |  |  |  | 40h | 40h |
| 19 | 6.1 | Вывод чертежей на плоттер | 2d | 2004-03-25 A | 2004-03-26 A | 3 | 100% |  | 2004-03-25 | 2004-03-26 | 2d |  |  | Цветков | 16h | 16h |
| 20 | 6.2 | Версия 1.1.0.82 (см.History.txt) | 2d | 2004-03-30 A | 2004-03-31 A | 19 | 100% |  | 2004-03-30 | 2004-03-31 | 2d |  |  | Цветков | 16h | 16h |
| 21 | 6.3 | Проблемы с выводом на HP DesignJet500 | 1d | 2004-04-01 A | 2004-04-01 A | 20 | 100% |  | 2004-04-01 | 2004-04-01 | 1d |  |  | Цветков | 8h | 8h |
| 23 | 7 | **Достижение функциональности Scad Viewer BCB** | 10d | 2004-11-02 A | 2004-11-17 |  | 71% | 2.86d | 2004-11-02 | 2004-11-17 | 10d | 434d | start no earlier than 2004-11-02 | Цветков | 132h | 101.14h |
| 24 | 7.1 | Копирование картинки в буфер обмена | 0.5d | 2004-11-02 A | 2004-11-02 A |  | 100% |  | 2004-11-02 | 2004-11-02 | 0.5d |  |  | Цветков | 4h | 4h |
| 25 | 7.2 | Информация о модели в статусбаре | 0.5d | 2004-11-02 A | 2004-11-02 A | 24 | 100% |  | 2004-11-02 | 2004-11-02 | 0.5d |  |  |  |  |  |
| 26 | 7.3 | Удаление результатов расчета | 1d | 2004-11-03 A | 2004-11-03 A | 25 | 100% |  | 2004-11-03 | 2004-11-03 | 1d |  |  | Цветков | 8h | 8h |

| ID | WBS | Task | Duration | Start | Finish | Predecessors | Complete | Remaining | Baseline start | Baseline finish | Baseline duration | Total slack | Free slack | Constraint | Resources | Work | Actual work |
| --- | --- | --- | --- | --- | --- | --- | --- | --- | --- | --- | --- | --- | --- | --- | --- | --- | --- |
| 27 | 7.4 | **Экспорт файлов** | 2d | 2004-11-10 A | 2004-11-11 A | 37 | 100% |  | 2004-11-10 | 2004-11-11 | 2d |  |  |  | Цветков | 32h | 32h |
| 28 | 7.4.1 | DXF | 1d | 2004-11-10 A | 2004-11-10 A |  | 100% |  | 2004-11-10 | 2004-11-10 | 1d |  |  |  | Цветков | 8h | 8h |
| 29 | 7.4.2 | BMP | 1d | 2004-11-11 A | 2004-11-11 A | 28 | 100% |  | 2004-11-11 | 2004-11-11 | 1d |  |  |  | Цветков | 8h | 8h |
| 30 | 7.5 | **Экспорт каталога в RTF** | 2d | 2004-11-12 A | 2004-11-16 | 29 | 50% | 1d | 2004-11-12 | 2004-11-16 | 2d | 434d | 0d |  |  |  |  |
| 31 | 7.5.1 | Property Page | 1d | 2004-11-12 | 2004-11-12 |  |  |  | 2004-11-12 | 2004-11-12 | 1d | 435d |  |  |  |  |  |
| 32 | 7.5.2 | Реализация | 1d | 2004-11-16 A | 2004-11-16 A | 31 | 100% |  | 2004-11-16 | 2004-11-16 | 1d |  |  |  |  |  |  |
| 33 | 7.6 | Пропорциональное изменение размеров панелей при ресайзинге | 1d | 2004-11-17 | 2004-11-17 | 30 |  |  | 2004-11-17 | 2004-11-17 | 1d | 434d |  |  | Цветков | 8h |  |
| 35 | 8 | **Дополнительная функциональность** | 19d? | 2004-11-04 A | 2004-12-07 |  | 57% | 8.14d? | 2004-11-04 | 2004-12-07 | 19d? | 423d |  | start no earlier than 2004-11-02 |  | 88h | 72h |
| 36 | 8.1 | **Корректная отрисовка полупрозрачной модели** | 3d | 2004-11-04 A | 2004-11-09 A | 26 | 100% |  | 2004-11-04 | 2004-11-09 | 3d |  |  |  | Цветков | 24h | 24h |
| 37 | 8.1.1 | Алгоритм без разбиения элементов | 3d | 2004-11-04 A | 2004-11-09 A |  | 100% |  | 2004-11-04 | 2004-11-09 | 3d |  |  |  |  |  |  |
| 38 | 8.2 | Разделить Main Toolbar на несколько по функц. Назначению | 1d | 2004-11-18 A | 2004-11-18 A | 33 | 100% |  | 2004-11-18 | 2004-11-18 | 1d |  |  |  | Цветков | 8h | 8h |
| 39 | 8.3 | Selection/Hiding элемента | 2d | 2004-11-19 A | 2004-11-23 A | 38 | 100% |  | 2004-11-19 | 2004-11-23 | 2d |  |  |  | Цветков | 16h | 16h |
| 40 | 8.4 | **Проблемы:** | 2d? | 2004-11-24 A | 2004-11-25 | 39 | 50% | 1d? | 2004-11-24 | 2004-11-25 | 2d? | 424d | 0d |  | Цветков | 32h | 16h |
| 41 | 8.4.1 | Неравномерное залитие цветом эл-тов в перспективе | 1d? | 2004-11-24 | 2004-11-24 |  |  |  | 2004-11-24 | 2004-11-24 | 1d? | 425d |  |  | Цветков | 8h |  |
| 42 | 8.4.2 | Неправильное отображение совпадающих пластин | 1d? | 2004-11-25 A | 2004-11-25 A | 41 | 100% |  | 2004-11-25 | 2004-11-25 | 1d? |  |  |  | Цветков | 8h | 8h |
| 43 | 8.5 | Контекстная справка | 5d | 2004-11-26 | 2004-12-03 | 40 |  |  | 2004-11-26 | 2004-12-03 | 5d | 424d |  |  |  |  |  |
| 44 | 8.6 | Поддержка других типов файлов | 1d? | 2004-12-07 A | 2004-12-07 A | 43 | 100% |  | 2004-12-07 | 2004-12-07 | 1d? |  |  |  | Цветков | 8h | 8h |
| 46 | 9 | **Планы** | 1d? | 2004-05-28 A | 2004-05-28 | 17 | 23% | 0.77d? | 2004-05-28 | 2004-05-28 | 1d? | 532d |  |  |  | 8h |  |
| 47 | 9.1 | ? Element properties | 1d? | 2004-05-28 | 2004-05-28 |  |  |  | 2004-05-28 | 2004-05-28 | 1d? | 532d |  |  | Цветков | 8h |  |
| 48 | 9.2 | Отображение результатов расчета | 1d? | 2004-05-28 | 2004-05-28 |  |  |  | 2004-05-28 | 2004-05-28 | 1d? | 532d |  |  |  |  |  |
| 49 | 9.3 | Поддержка рендерера Mpeg | 1d? | 2004-05-28 A | 2004-05-28 |  | 75% | 0.25d? | 2004-05-28 | 2004-05-28 | 1d? | 532d |  |  |  |  |  |
| 51 | 9.4 | Убрать отменку элемента после опции "Элементы в плоскости выбора | 2h | 2004-05-28 | 2004-05-28 |  |  |  | 2004-05-28 | 2004-05-28 | 2h | 532.75d |  |  |  |  |  |
| 52 | 10 | **Завершение 1-го договора** | 12d? | 2006-11-27 | 2006-12-14 |  |  |  | 2006-11-27 | 2006-12-14 | 12d? | 0d |  |  |  |  |  |
| 53 | 10.1 | **Исправление ошибок** | 2d? | 2006-11-27 | 2006-11-28 |  |  |  | 2006-11-27 | 2006-11-28 | 2d? | 1d | 0d |  |  |  |  |
| 54 | 10.1.1 | **Баг с треугольниками** | 2d? | 2006-11-27 | 2006-11-28 |  |  |  | 2006-11-27 | 2006-11-28 | 2d? | 1d |  |  |  |  |  |
| 55 | 10.1.1.1 | Треугольники, четырёхугольники с числом узлов болдее 3-х/4-х | 1d | 2006-11-27 | 2006-11-27 |  |  |  | 2006-11-27 | 2006-11-27 | 1d | 1d | 0d | start no earlier than 2006-11-27 |  |  |  |
| 56 | 10.1.1.2 | Зависание на фрагменте схемы | 1d? | 2006-11-28 | 2006-11-28 | 55 |  |  | 2006-11-28 | 2006-11-28 | 1d? | 1d |  |  |  |  |  |

Notes:
- 36: Разбиение перекрывающихся элементов и правильная сортировка по глубине

| ID | WBS | Task | Type | Duration | Start | Finish | Predecessors | Baseline start | Baseline finish | Baseline duration | Total slack | Free slack | Constraint |
| --- | --- | --- | --- | --- | --- | --- | --- | --- | --- | --- | --- | --- | --- |
| 57 | 10.2 | **Новый фунционал** |  | 9d | 2006-11-29 | 2006-12-13 | 53 | 2006-11-29 | 2006-12-13 | 9d | 1d |  |  |
| 58 | 10.2.1 | Коэффициент в настройки для шкалы деформации |  | 1d | 2006-11-29 | 2006-11-29 |  | 2006-11-29 | 2006-11-29 | 1d | 1d | 0d |  |
| 59 | 10.2.2 | Настройки шрифтов |  | 2d | 2006-11-30 | 2006-12-01 | 58 | 2006-11-30 | 2006-12-01 | 2d | 1d | 0d |  |
| 60 | 10.2.3 | **Отображение усилий** |  | 2d | 2006-12-05 | 2006-12-06 | 59 | 2006-12-05 | 2006-12-06 | 2d | 1d | 0d |  |
| 61 | 10.2.3.1 | Получение результатов |  | 1d | 2006-12-05 | 2006-12-05 |  | 2006-12-05 | 2006-12-05 | 1d | 1d | 0d |  |
| 62 | 10.2.3.2 | Отрисовка сетки |  | 1d | 2006-12-06 | 2006-12-06 | 61 | 2006-12-06 | 2006-12-06 | 1d | 1d |  |  |
| 63 | 10.2.4 | **Отображение результатов внутри вьювер-а** |  | 3d | 2006-12-07 | 2006-12-12 | 60 | 2006-12-07 | 2006-12-12 | 3d | 1d |  |  |
| 64 | 10.2.4.1 | View для результатов расчета |  | 1d | 2006-12-07 | 2006-12-07 |  | 2006-12-07 | 2006-12-07 | 1d | 1d | 0d |  |
| 65 | 10.2.4.2 | Новый тулбар |  | 1d | 2006-12-08 | 2006-12-08 | 64 | 2006-12-08 | 2006-12-08 | 1d | 1d | 0d |  |
| 66 | 10.2.4.3 | Многооконный режим |  | 1d | 2006-12-12 | 2006-12-12 | 65 | 2006-12-12 | 2006-12-12 | 1d | 1d | 0d |  |
| 67 | 10.2.5 | Тестирование поставки |  | 1d | 2006-12-13 | 2006-12-13 | 66 | 2006-12-13 | 2006-12-13 | 1d | 1d |  |  |
| 68 | 10.3 | Milestone | milestone | 0d | 2006-12-14 | 2006-12-14 | 67 | 2006-12-14 | 2006-12-14 | 0d | 0d |  | must finish on 2006-12-14 |
